# EPC_Project_Plan

Schedule from MS Project XML, 2025-03-03 to 2026-10-02.

## Calendars

- Standard: Mon-Fri 08:00-12:00, 13:00-17:00; Sat-Sun off.

## Resources

| Resource |
| --- |
| Project Management |
| Process Engineering |
| I&A |
| Electrical |
| HVAC |
| Sanitary |
| Qualification |
| BIM/3D-Coordination |
| Piping |

## Schedule

| ID | WBS | Task | Duration | Start | Finish | Predecessors | Baseline start | Baseline finish | Baseline duration | Total slack | Free slack | Resources | Work | Text1 | Text2 |
| --- | --- | --- | --- | --- | --- | --- | --- | --- | --- | --- | --- | --- | --- | --- | --- |
| 1 | 1 | **Phase 1 - Basing Engineering & Project Setup** | 75d | 2025-03-03 | 2025-06-13 |  | 2025-03-03 | 2025-06-13 | 75d | 0d |  |  | 1160h |  |  |
| 2 | 1.1 | Project Kickoff & Scope Freeze | 10d | 2025-03-03 | 2025-03-14 |  | 2025-03-03 | 2025-03-14 | 10d | 0d |  | Project Management | 80h | Project Mgmt |  |
| 3 | 1.2 | Process Simulation & Block Flow Diagrams | 20d | 2025-03-17 | 2025-04-11 | 2 | 2025-03-17 | 2025-04-11 | 20d | 0d |  | Process Engineering | 160h | Process Engineering | 2 |
| 4 | 1.3 | P&ID Revision 0 (Process) | 25d | 2025-04-14 | 2025-05-16 | 3 | 2025-04-14 | 2025-05-16 | 25d | 0d |  | Process Engineering | 200h | Process Engineering | 2 |
| 5 | 1.4 | Instrument Index & I/O List Rev 0 | 20d | 2025-05-19 | 2025-06-13 | 4 | 2025-05-19 | 2025-06-13 | 20d | 25d | 0d | I&A | 160h | I&A | 6 |
| 6 | 1.5 | Electrical Load List & SLD Rev 0 | 20d | 2025-05-19 | 2025-06-13 | 4 | 2025-05-19 | 2025-06-13 | 20d | 25d | 0d | Electrical | 160h | Electrical | 5 |
| 7 | 1.6 | HVAC Zoning & Air Balance Concept | 15d | 2025-05-19 | 2025-06-06 | 4 | 2025-05-19 | 2025-06-06 | 15d | 25d | 0d | HVAC | 120h | HVAC | 3 |
| 8 | 1.7 | Sanitary & Infrastructure Concept | 15d | 2025-05-19 | 2025-06-06 | 4 | 2025-05-19 | 2025-06-06 | 15d | 30d | 0d | Sanitary | 120h | Sanitary | 4 |
| 9 | 1.8 | Qualification Risk Assessment (URS/FRA) | 20d | 2025-05-19 | 2025-06-13 | 4 | 2025-05-19 | 2025-06-13 | 20d | 235d | 20d | Qualification | 160h | Qualification | 7 |
| 10 | 2 | **Phase 2 - Detail Engineering & 3D Model Build** | 180d | 2025-03-17 | 2025-11-21 |  | 2025-03-17 | 2025-11-21 | 180d | 30d |  |  | 2920h |  |  |
| 11 | 2.1 | Equipment Layout & 3D Model Setup | 15d | 2025-03-17 | 2025-04-04 | 2 | 2025-03-17 | 2025-04-04 | 15d | 30d |  | BIM/3D-Coordination | 120h | BIM / 3D Coord. |  |
| 12 | 2.2 | Piping Route Study & Line List | 20d | 2025-05-19 | 2025-06-13 | 11, 4 | 2025-05-19 | 2025-06-13 | 20d | 0d |  | Piping | 160h | Piping | 1 |
| 13 | 2.3 | Pipe Spec & Material Requisition Rev 0 | 15d | 2025-06-16 | 2025-07-04 | 12 | 2025-06-16 | 2025-07-04 | 15d | 0d |  | Piping | 120h | Piping | 1 |
| 14 | 2.4 | P&ID Revision 1 (All Disciplines) | 20d | 2025-06-16 | 2025-07-11 | 5, 6, 7, 8 | 2025-06-16 | 2025-07-11 | 20d | 115d | 0d | Process Engineering | 160h | Process Engineering | 2 |
| 15 | 2.5 | HVAC Ductwork 3D Modelling | 25d | 2025-06-09 | 2025-07-11 | 11, 7 | 2025-06-09 | 2025-07-11 | 25d | 25d |  | HVAC | 200h | HVAC | 3 |
| 16 | 2.6 | Sanitary Drainage 3D Modelling | 20d | 2025-06-09 | 2025-07-04 | 11, 8 | 2025-06-09 | 2025-07-04 | 20d | 30d |  | Sanitary | 160h | Sanitary | 4 |
| 17 | 2.7 | Electrical Cable Tray & Containment 3D | 20d | 2025-06-16 | 2025-07-11 | 11, 6 | 2025-06-16 | 2025-07-11 | 20d | 25d | 0d | Electrical | 160h | Electrical | 5 |
| 18 | 2.8 | I&A Field Device Layout 3D | 20d | 2025-06-16 | 2025-07-11 | 11, 5 | 2025-06-16 | 2025-07-11 | 20d | 25d | 0d | I&A | 160h | I&A | 6 |
| 19 | 2.9 | Piping 3D Model - Priority Lines | 30d | 2025-07-07 | 2025-08-15 | 13, 11 | 2025-07-07 | 2025-08-15 | 30d | 0d |  | Piping | 240h | Piping | 1 |
| 20 | 2.10 | BIM Coordination Round 1 - Clash Report | 10d | 2025-08-18 | 2025-08-29 | 15, 16, 17, 18, 19 | 2025-08-18 | 2025-08-29 | 10d | 0d |  | BIM/3D-Coordination | 80h | BIM / 3D Coord. |  |
| 21 | 2.11 | Clash Resolution - All Disciplines | 15d | 2025-09-01 | 2025-09-19 | 20 | 2025-09-01 | 2025-09-19 | 15d | 0d |  | BIM/3D-Coordination | 120h | BIM / 3D Coord. |  |
| 22 | 2.12 | Piping 3D Model - Secondary Lines | 25d | 2025-09-22 | 2025-10-24 | 21 | 2025-09-22 | 2025-10-24 | 25d | 0d |  | Piping | 200h | Piping | 1 |
| 23 | 2.13 | Stress Analysis - Critical Lines | 20d | 2025-10-27 | 2025-11-21 | 22 | 2025-10-27 | 2025-11-21 | 20d | 0d |  | Piping | 160h | Piping | 1 |
| 24 | 2.14 | I&A Control Philosophy & Logic Diagrams | 20d | 2025-07-14 | 2025-08-08 | 14, 18 | 2025-07-14 | 2025-08-08 | 20d | 130d | 0d | I&A | 160h | I&A | 6 |
| 25 | 2.15 | DCS / SCADA Architecture & Panel Layout | 25d | 2025-08-11 | 2025-09-12 | 24 | 2025-08-11 | 2025-09-12 | 25d | 130d | 0d | I&A | 200h | I&A | 6 |
| 26 | 2.16 | Electrical Single-Line Final & Cable Schedule | 20d | 2025-07-14 | 2025-08-08 | 17, 14 | 2025-07-14 | 2025-08-08 | 20d | 115d | 0d | Electrical | 160h | Electrical | 5 |
| 27 | 2.17 | HVAC Detailed Design & Equipment Schedule | 20d | 2025-09-22 | 2025-10-17 | 21, 15 | 2025-09-22 | 2025-10-17 | 20d | 103d | 0d | HVAC | 160h | HVAC | 3 |
| 28 | 2.18 | Qualification IQ/OQ Protocol Drafts | 25d | 2025-07-14 | 2025-08-15 | 9, 14 | 2025-07-14 | 2025-08-15 | 25d | 215d | 195d | Qualification | 200h | Qualification | 7 |

| ID | WBS | Task | Duration | Start | Finish | Predecessors | Baseline start | Baseline finish | Baseline duration | Total slack | Free slack | Resources | Work | Text1 | Text2 |
| --- | --- | --- | --- | --- | --- | --- | --- | --- | --- | --- | --- | --- | --- | --- | --- |
| 29 | 3 | **Phase 3 - IFC Issue, Procurement & Construction** | 200d | 2025-08-11 | 2026-05-15 |  | 2025-08-11 | 2026-05-15 | 200d | 75d |  |  | 2176h |  |  |
| 30 | 3.1 | Piping - Isometric IFC Package | 15d | 2025-11-24 | 2025-12-12 | 23, 22 | 2025-11-24 | 2025-12-12 | 15d | 0d |  | Piping | 120h | Piping | 1 |
| 31 | 3.2 | HVAC - IFC Drawing Package | 7d | 2025-10-20 | 2025-10-28 | 27 | 2025-10-20 | 2025-10-28 | 7d | 103d | 0d | HVAC | 56h | HVAC | 3 |
| 32 | 3.3 | Sanitary - IFC Drawing Package | 10d | 2025-09-22 | 2025-10-03 | 16, 21 | 2025-09-22 | 2025-10-03 | 10d | 260d |  | Sanitary | 80h | Sanitary | 4 |
| 33 | 3.4 | Electrical - IFC Drawing Package | 10d | 2025-08-11 | 2025-08-22 | 26 | 2025-08-11 | 2025-08-22 | 10d | 115d | 0d | Electrical | 80h | Electrical | 5 |
| 34 | 3.5 | I&A - IFC Instrument Package | 10d | 2025-09-15 | 2025-09-26 | 25 | 2025-09-15 | 2025-09-26 | 10d | 130d | 15d | I&A | 80h | I&A | 6 |
| 35 | 3.6 | Piping Prefab & Spooling | 40d | 2025-12-15 | 2026-02-06 | 30 | 2025-12-15 | 2026-02-06 | 40d | 0d |  | Piping | 320h | Piping | 1 |
| 36 | 3.7 | Site Mechanical Installation | 50d | 2026-02-09 | 2026-04-17 | 35 | 2026-02-09 | 2026-04-17 | 50d | 0d |  | Piping | 400h | Piping | 1 |
| 37 | 3.8 | HVAC Installation | 35d | 2025-10-29 | 2025-12-16 | 31 | 2025-10-29 | 2025-12-16 | 35d | 103d | 88d | HVAC | 280h | HVAC | 3 |
| 38 | 3.9 | Electrical Installation | 40d | 2025-08-25 | 2025-10-17 | 33 | 2025-08-25 | 2025-10-17 | 40d | 115d | 0d | Electrical | 320h | Electrical | 5 |
| 39 | 3.10 | I&A Installation & Loop Check | 35d | 2025-10-20 | 2025-12-05 | 34, 38 | 2025-10-20 | 2025-12-05 | 35d | 115d | 95d | I&A | 280h | I&A | 6 |
| 40 | 3.11 | BIM As-Built Update | 20d | 2026-04-20 | 2026-05-15 | 36, 37, 38, 39 | 2026-04-20 | 2026-05-15 | 20d | 20d | 0d | BIM/3D-Coordination | 160h | BIM / 3D Coord. |  |
| 41 | 4 | **Phase 4 - Commissioning & Qualification** | 120d | 2026-04-20 | 2026-10-02 |  | 2026-04-20 | 2026-10-02 | 120d | 0d |  |  | 1120h |  |  |
| 42 | 4.1 | Pre-commissioning & Flushing | 15d | 2026-04-20 | 2026-05-08 | 36 | 2026-04-20 | 2026-05-08 | 15d | 0d |  | Piping | 120h | Piping | 1 |
| 43 | 4.2 | Commissioning - Utilities & HVAC | 20d | 2026-05-11 | 2026-06-05 | 37, 42 | 2026-05-11 | 2026-06-05 | 20d | 0d |  | HVAC | 160h | HVAC | 3 |
| 44 | 4.3 | Commissioning - Process Systems | 25d | 2026-06-08 | 2026-07-10 | 39, 43 | 2026-06-08 | 2026-07-10 | 25d | 0d |  | Process Engineering | 200h | Process Engineering | 2 |
| 45 | 4.4 | IQ Execution - All Systems | 20d | 2026-05-18 | 2026-06-12 | 28, 40 | 2026-05-18 | 2026-06-12 | 20d | 20d |  | Qualification | 160h | Qualification | 7 |
| 46 | 4.5 | OQ Execution - Process & I&A Systems | 25d | 2026-07-13 | 2026-08-14 | 44, 45 | 2026-07-13 | 2026-08-14 | 25d | 0d |  | Qualification | 200h | Qualification | 7 |
| 47 | 4.6 | PQ / Performance Qualification | 20d | 2026-08-17 | 2026-09-11 | 46 | 2026-08-17 | 2026-09-11 | 20d | 0d |  | Qualification | 160h | Qualification | 7 |
| 48 | 4.7 | Final As-Built Documentation & Handover | 15d | 2026-09-14 | 2026-10-02 | 40, 47 | 2026-09-14 | 2026-10-02 | 15d | 0d |  | BIM/3D-Coordination | 120h | BIM / 3D Coord. |  |
